# SQLcm Development Schedule (Luminara)

Schedule from MS Project, 2011-01-17 to 2011-05-30.
Idera

## Calendars

- Standard: Mon-Fri 08:00-12:00, 13:00-17:00; Sat-Sun off.

## Resources

| Resource | Group |
| --- | --- |
| Robert Wilkinson | Idera Developers |

## Schedule

| ID | WBS | Task | Duration | Start | Finish | Total slack | Constraint | Resources | Work |
| --- | --- | --- | --- | --- | --- | --- | --- | --- | --- |
| 1 | 1 | **Customer Issues Plus (CIP)** | 96d | 2011-01-17 08:00 | 2011-05-30 17:00 | 0d |  |  |  |
| 2 | 1.1 | **CIP - Robert** | 96d | 2011-01-17 08:00 | 2011-05-30 17:00 | 0d |  |  |  |
| 3 | 1.1.1 | CIP - Robert 1 | 8h | 2011-01-17 08:00 | 2011-01-17 17:00 | 95d | start no earlier than 2011-01-17 08:00 |  |  |
| 4 | 1.1.2 | CIP - Robert 2 | 8h | 2011-01-24 08:00 | 2011-01-24 17:00 | 90d | start no earlier than 2011-01-24 08:00 |  |  |
| 5 | 1.1.3 | CIP - Robert 3 | 8h | 2011-01-31 08:00 | 2011-01-31 17:00 | 85d | start no earlier than 2011-01-31 08:00 |  |  |
| 6 | 1.1.4 | CIP - Robert 4 | 8h | 2011-02-07 08:00 | 2011-02-07 17:00 | 80d | start no earlier than 2011-02-07 08:00 |  |  |
| 7 | 1.1.5 | CIP - Robert 5 | 8h | 2011-02-14 08:00 | 2011-02-14 17:00 | 75d | start no earlier than 2011-02-14 08:00 |  |  |
| 8 | 1.1.6 | CIP - Robert 6 | 8h | 2011-02-21 08:00 | 2011-02-21 17:00 | 70d | start no earlier than 2011-02-21 08:00 |  |  |
| 9 | 1.1.7 | CIP - Robert 7 | 8h | 2011-02-28 08:00 | 2011-02-28 17:00 | 65d | start no earlier than 2011-02-28 08:00 |  |  |
| 10 | 1.1.8 | CIP - Robert 8 | 8h | 2011-03-07 08:00 | 2011-03-07 17:00 | 60d | start no earlier than 2011-03-07 08:00 |  |  |
| 11 | 1.1.9 | CIP - Robert 9 | 8h | 2011-03-14 08:00 | 2011-03-14 17:00 | 55d | start no earlier than 2011-03-14 08:00 |  |  |
| 12 | 1.1.10 | CIP - Robert 10 | 8h | 2011-03-21 08:00 | 2011-03-21 17:00 | 50d | start no earlier than 2011-03-21 08:00 |  |  |
| 13 | 1.1.11 | CIP - Robert 11 | 8h | 2011-03-28 08:00 | 2011-03-28 17:00 | 45d | start no earlier than 2011-03-28 08:00 |  |  |
| 14 | 1.1.12 | CIP - Robert 12 | 8h | 2011-04-04 08:00 | 2011-04-04 17:00 | 40d | start no earlier than 2011-04-04 08:00 |  |  |
| 15 | 1.1.13 | CIP - Robert 13 | 8h | 2011-04-11 08:00 | 2011-04-11 17:00 | 35d | start no earlier than 2011-04-11 08:00 |  |  |
| 16 | 1.1.14 | CIP - Robert 14 | 8h | 2011-04-18 08:00 | 2011-04-18 17:00 | 30d | start no earlier than 2011-04-18 08:00 |  |  |
| 17 | 1.1.15 | CIP - Robert 15 | 8h | 2011-04-25 08:00 | 2011-04-25 17:00 | 25d | start no earlier than 2011-04-25 08:00 |  |  |
| 18 | 1.1.16 | CIP - Robert 16 | 8h | 2011-05-02 08:00 | 2011-05-02 17:00 | 20d | start no earlier than 2011-05-02 08:00 |  |  |
| 19 | 1.1.17 | CIP - Robert 17 | 8h | 2011-05-09 08:00 | 2011-05-09 17:00 | 15d | start no earlier than 2011-05-09 08:00 |  |  |
| 20 | 1.1.18 | CIP - Robert 18 | 8h | 2011-05-16 08:00 | 2011-05-16 17:00 | 10d | start no earlier than 2011-05-16 08:00 |  |  |
| 21 | 1.1.19 | CIP - Robert 19 | 8h | 2011-05-23 08:00 | 2011-05-23 17:00 | 5d | start no earlier than 2011-05-23 08:00 |  |  |
| 22 | 1.1.20 | CIP - Robert 20 | 8h | 2011-05-30 08:00 | 2011-05-30 17:00 | 0d | start no earlier than 2011-05-30 08:00 |  |  |
| 24 | 2 | **Development** | 40d? | 2011-01-17 08:00 | 2011-03-11 17:00 | 56d |  |  | 288h |
| 25 | 2.1 | **Milestone 1 (M1)** | 5d? | 2011-01-17 08:00 | 2011-01-21 17:00 | 91d |  |  | 64h |
| 26 | 2.1.1 | **M1 - 11047** | 1d | 2011-01-17 08:00 | 2011-01-17 17:00 | 95d |  |  | 8h |
| 27 | 2.1.1.1 | M1 - Bug Fixes - 11047 Collection Server Trace Filtering | 1d | 2011-01-17 08:00 | 2011-01-17 17:00 | 95d |  | Robert Wilkinson | 8h |

Notes:
- 1: Recurring weekly task for each developer, with the following activities: / - customer issues / - development meetings, etc.

| ID | WBS | Task | Duration | Start | Finish | Predecessors | Total slack | Free slack | Constraint | Resources | Work |
| --- | --- | --- | --- | --- | --- | --- | --- | --- | --- | --- | --- |
| 28 | 2.1.2 | **M1 - 11050** | 1d? | 2011-01-17 08:00 | 2011-01-17 17:00 |  | 95d |  |  |  | 8h |
| 29 | 2.1.2.1 | M1 - 11050 - Trigger Assembly Path | 1d? | 2011-01-17 08:00 | 2011-01-17 17:00 |  | 95d |  |  | Robert Wilkinson | 8h |
| 30 | 2.1.3 | **M1 - 11030** | 1d? | 2011-01-17 08:00 | 2011-01-17 17:00 |  | 95d |  |  |  | 8h |
| 31 | 2.1.3.1 | M1 - 11030 - SQL Server trace processing | 1d? | 2011-01-17 08:00 | 2011-01-17 17:00 |  | 95d |  |  | Robert Wilkinson | 8h |
| 32 | 2.1.4 | **M1 - Update Installer and Autorun (New Release)** | 5d | 2011-01-17 08:00 | 2011-01-21 17:00 |  | 91d |  |  |  | 40h |
| 33 | 2.1.4.1 | M1 - New Release - Update Installer codes and version | 3d | 2011-01-17 08:00 | 2011-01-19 17:00 |  | 91d | 0d |  | Robert Wilkinson | 24h |
| 34 | 2.1.4.2 | M1- New Release - Update autorun version info | 2d | 2011-01-20 08:00 | 2011-01-21 17:00 | 33 | 91d |  |  | Robert Wilkinson | 16h |
| 36 | 2.2 | **Milestone 2 (M2)** | 5d | 2011-01-24 08:00 | 2011-01-28 17:00 |  | 86d |  | start no earlier than 2011-01-24 08:00 |  | 32h |
| 37 | 2.2.1 | **M2 - Bug Fixes - 11020** | 5d | 2011-01-24 08:00 | 2011-01-28 17:00 |  | 86d |  |  |  | 32h |
| 38 | 2.2.1.1 | M2 - 11020 - Agent Changes | 2.5d | 2011-01-24 08:00 | 2011-01-26 12:00 |  | 86d | 0d |  | Robert Wilkinson | 20h |
| 39 | 2.2.1.2 | M2 - 11020 - Repository Changes | 0.5d | 2011-01-26 13:00 | 2011-01-26 17:00 | 38 | 86d | 0d |  | Robert Wilkinson | 4h |
| 40 | 2.2.1.3 | M2 - Console Changes | 1d | 2011-01-27 08:00 | 2011-01-27 17:00 | 39 | 86d | 0d |  | Robert Wilkinson | 8h |
| 41 | 2.2.1.4 | M2 - Unit and Integration Testing | 1d | 2011-01-28 08:00 | 2011-01-28 17:00 | 40 | 86d |  |  |  |  |
| 43 | 2.3 | **Milestone 3 (M3)** | 5d | 2011-01-31 08:00 | 2011-02-04 17:00 |  | 81d |  | start no earlier than 2011-01-31 08:00 |  | 40h |
| 44 | 2.3.1 | **M3 - FIPS** | 5d | 2011-01-31 08:00 | 2011-02-04 17:00 |  | 81d |  |  |  | 40h |
| 45 | 2.3.1.1 | M3 - FIPS - New Licensing Dll | 2d | 2011-01-31 08:00 | 2011-02-01 17:00 |  | 81d | 0d |  | Robert Wilkinson | 16h |
| 46 | 2.3.1.2 | M3 - FIPS - Unit testing and Integration | 3d | 2011-02-02 08:00 | 2011-02-04 17:00 | 45 | 81d |  |  | Robert Wilkinson | 24h |
| 48 | 2.4 | **Milestone 4 (M4)** | 5d | 2011-02-07 08:00 | 2011-02-11 17:00 |  | 76d |  | start no earlier than 2011-02-07 08:00 |  | 40h |
| 49 | 2.4.1 | **M4 - Feature Complete 1 (FC1)** | 5d | 2011-02-07 08:00 | 2011-02-11 17:00 |  | 76d |  |  |  | 40h |
| 50 | 2.4.1.1 | M4 - FC1 - Prs from previous milestones | 5d | 2011-02-07 08:00 | 2011-02-11 17:00 |  | 76d |  |  | Robert Wilkinson | 40h |
| 51 | 2.4.1.2 | M4 - FC1 - Doc Changes | 5d | 2011-02-07 08:00 | 2011-02-11 17:00 |  | 76d |  |  |  |  |
| 53 | 2.5 | **Milestone 5 (M5)** | 5d | 2011-02-14 08:00 | 2011-02-18 17:00 |  | 71d |  | start no earlier than 2011-02-14 08:00 |  | 40h |
| 54 | 2.5.1 | **M5 - Alert when a data value changes (DataAlert)** | 5d | 2011-02-14 08:00 | 2011-02-18 17:00 |  | 71d |  |  |  | 40h |
| 55 | 2.5.1.1 | M5 - DataAlert - UI Changes - Console | 2d | 2011-02-14 08:00 | 2011-02-15 17:00 |  | 71d | 0d |  | Robert Wilkinson | 16h |
| 56 | 2.5.1.2 | M5 - DataAlert - UI Changes - New Wizard | 3d | 2011-02-16 08:00 | 2011-02-18 17:00 | 55 | 71d |  |  | Robert Wilkinson | 24h |

| ID | WBS | Task | Duration | Start | Finish | Predecessors | Total slack | Free slack | Constraint | Resources | Work |
| --- | --- | --- | --- | --- | --- | --- | --- | --- | --- | --- | --- |
| 58 | 2.6 | **Milestone 6 (M6)** | 5d? | 2011-02-21 08:00 | 2011-02-25 17:00 |  | 66d |  | start no earlier than 2011-02-21 08:00 |  | 40h |
| 59 | 2.6.1 | **M6 - Store Rules and Create Alerts (DataAlert)** | 5d? | 2011-02-21 08:00 | 2011-02-25 17:00 |  | 66d |  |  |  | 40h |
| 60 | 2.6.1.1 | M6 - DataAlert - Repository Changes | 1d? | 2011-02-21 08:00 | 2011-02-21 17:00 |  | 66d | 0d |  | Robert Wilkinson | 8h |
| 61 | 2.6.1.2 | M6 - DataAlert - Collection Server Changes | 2d | 2011-02-22 08:00 | 2011-02-23 17:00 | 60 | 66d | 0d |  | Robert Wilkinson | 16h |
| 62 | 2.6.1.3 | M6 - DataAlert - Unit Testing and Integration | 2d | 2011-02-24 08:00 | 2011-02-25 17:00 | 61 | 66d |  |  | Robert Wilkinson | 16h |
| 64 | 2.7 | **Milestone 7 (M7)** | 5d | 2011-02-28 08:00 | 2011-03-04 17:00 |  | 61d |  | start no earlier than 2011-02-28 08:00 |  | 32h |
| 65 | 2.7.1 | **M7 - DataAlert Reports** | 4d | 2011-02-28 08:00 | 2011-03-03 17:00 |  | 62d |  |  |  | 32h |
| 66 | 2.7.1.1 | M7 - New Data Alert Report | 3d | 2011-02-28 08:00 | 2011-03-02 17:00 |  | 62d | 0d |  | Robert Wilkinson | 24h |
| 67 | 2.7.1.2 | M7 - Add Data Alert to Alert Rules Report | 1d | 2011-03-03 08:00 | 2011-03-03 17:00 | 66 | 62d |  |  | Robert Wilkinson | 8h |
| 68 | 2.7.2 | **M7 - Feature Complete 2** | 5d | 2011-02-28 08:00 | 2011-03-04 17:00 |  | 61d |  |  |  |  |
| 69 | 2.7.2.1 | M7 - Doc Changes | 5d | 2011-02-28 08:00 | 2011-03-04 17:00 |  | 61d |  |  |  |  |
| 71 | 2.8 | **Milestone 8 (M8)** | 5d | 2011-03-07 08:00 | 2011-03-11 17:00 |  | 56d |  | start no earlier than 2011-03-07 08:00 |  |  |
| 72 | 2.8.1 | **M8 - PFC1** | 5d | 2011-03-07 08:00 | 2011-03-11 17:00 |  | 56d |  |  |  |  |
| 73 | 2.8.1.1 | M8 - PFC1 - PR fixes | 5d | 2011-03-07 08:00 | 2011-03-11 17:00 |  | 56d |  |  |  |  |
